# ProjetSess5_

How a schedule from MS Project changed from version to version. A marks actual dates.

## Version 1 (saved 2014-11-10, file ProjetSess5_.mpp)

Note of the change: Vendredi 14 novembre 2014

| ID | WBS | Task | Duration | Start | Finish | Predecessors | Total float |
| --- | --- | --- | --- | --- | --- | --- | --- |
| 1 | 1 | **Projet de la 5e session** | 5d | 2014-11-10 | 2014-11-14 |  | 0d |
| 2 |  | Début du projet | 0d | 2014-11-10 | 2014-11-10 |  | 0d |
| 3 | 1.2 | **Interface PC (#1)** | 3d | 2014-11-10 | 2014-11-12 |  | 2d |
| 4 |  | Communication CAN | 1d | 2014-11-10 | 2014-11-10 | 2 | 3d |
| 5 |  | Communication série | 1d | 2014-11-10 | 2014-11-10 | 2 | 2d |
| 6 |  | Heartbeats | 1d | 2014-11-11 | 2014-11-11 | 5 | 3d |
| 7 |  | Contrôle du véhicule | 1d | 2014-11-11 | 2014-11-11 | 5 | 3d |
| 8 |  | Réception données véhicule | 1d | 2014-11-11 | 2014-11-11 | 5 | 3d |
| 9 |  | Gestion des blocs | 1d | 2014-11-11 | 2014-11-11 | 5 | 3d |
| 10 |  | Date & heure | 1d | 2014-11-11 | 2014-11-11 | 5 | 2d |
| 11 |  | Historique | 1d | 2014-11-12 | 2014-11-12 | 10 | 2d |
| 12 |  | Image graphique de la piste | 1d | 2014-11-11 | 2014-11-11 | 5 | 3d |
| 13 |  | Gestion des exceptions | 1d | 2014-11-11 | 2014-11-11 | 4, 5 | 3d |
| 14 |  | Interface usager | 1d | 2014-11-10 | 2014-11-10 | 2 | 4d |
| 15 | 1.3 | **Véhicule & station 1 (#2)** | 4d | 2014-11-10 | 2014-11-13 |  | 1d |
| 16 | 1.3.1 | **Véhicule (DS89C450)** | 4d | 2014-11-10 | 2014-11-13 |  | 1d |
| 17 |  | Montage | 1d | 2014-11-10 | 2014-11-10 | 2 | 1d |
| 18 |  | Vérification du matériel | 1d | 2014-11-11 | 2014-11-11 | 17 | 1d |
| 19 |  | Suivie de la ligne | 1d | 2014-11-12 | 2014-11-12 | 18 | 1d |
| 20 |  | Sens de rotation | 1d | 2014-11-13 | 2014-11-13 | 19 | 1d |
| 21 |  | Arrêt | 1d | 2014-11-13 | 2014-11-13 | 19 | 1d |
| 22 |  | Communication | 1d | 2014-11-12 | 2014-11-12 | 18 | 2d |
| 23 |  | Transposition des fonctions | 1d | 2014-11-10 | 2014-11-10 | 2 | 4d |
| 24 | 1.3.2 | **Station 1 (uPSD3254A)** | 2d | 2014-11-10 | 2014-11-11 |  | 3d |
| 25 |  | Communication sans-fil | 1d | 2014-11-10 | 2014-11-10 | 2 | 3d |
| 26 |  | Communication CAN | 1d | 2014-11-10 | 2014-11-10 | 2 | 3d |
| 27 |  | Gestion des données | 1d | 2014-11-11 | 2014-11-11 | 25, 26 | 3d |
| 28 |  | No du véhicule | 1d | 2014-11-11 | 2014-11-11 | 25 | 3d |
| 29 |  | Gestion de l'heure | 1d | 2014-11-11 | 2014-11-11 | 25 | 3d |
| 30 |  | Sens d'arrivée | 1d | 2014-11-11 | 2014-11-11 | 25 | 3d |
| 31 |  | Gestion des feux de circulation | 1d | 2014-11-11 | 2014-11-11 | 26 | 3d |
| 32 | 1.4 | **Festo (#3)** | 5d | 2014-11-10 | 2014-11-14 |  | 0d |
| 33 | 1.4.1 | **Station 2 (Festo-uPSD3254A)** | 5d | 2014-11-10 | 2014-11-14 |  | 0d |
| 34 | 1.4.1.1 | **Fonctionnement Festo** | 3d | 2014-11-10 | 2014-11-12 |  | 1d |
| 35 |  | Montage | 1d | 2014-11-10 | 2014-11-10 | 2 | 1d |
| 36 |  | Circuit prototype | 1d | 2014-11-11 | 2014-11-11 | 35 | 1d |
| 37 |  | Test des I/O de la table | 1d | 2014-11-12 | 2014-11-12 | 36 | 1d |
| 38 | 1.4.1.2 | **Conception de la carte I2C** | 3d | 2014-11-10 | 2014-11-12 |  | 0d |
| 39 |  | Schématisation | 1d | 2014-11-10 | 2014-11-10 | 2 | 0d |
| 40 |  | PCB | 1d | 2014-11-11 | 2014-11-11 | 39 | 0d |
| 41 |  | Montage | 1d | 2014-11-12 | 2014-11-12 | 40 | 0d |
| 42 | 1.4.1.3 | **Drive Moteur** | 3d | 2014-11-10 | 2014-11-12 |  | 2d |
| 43 |  | Montage de la carte multi-I/O | 1d | 2014-11-10 | 2014-11-10 | 2 | 2d |
| 44 |  | Interfaçage de la carte multi-I/O | 1d | 2014-11-11 | 2014-11-11 | 43 | 2d |
| 45 |  | Contrôle des I/O du moteur | 1d | 2014-11-12 | 2014-11-12 | 44 | 2d |
| 46 |  | Communication Xbee | 1d | 2014-11-10 | 2014-11-10 | 2 | 3d |
| 47 |  | Interface triac | 1d | 2014-11-13 | 2014-11-13 | 37 | 1d |
| 48 |  | Chute des blocs | 1d | 2014-11-13 | 2014-11-13 | 37 | 1d |
| 49 |  | Commandes PC | 1d | 2014-11-11 | 2014-11-11 | 46 | 3d |
| 50 |  | Identification de la cargaison | 1d | 2014-11-13 | 2014-11-13 | 38 | 0d |
| 51 |  | Traitement et transfert des cargaisons | 1d | 2014-11-14 | 2014-11-14 | 50 | 0d |
| 52 | 1.5 | **SOC8200 (#4)** | 2d | 2014-11-10 | 2014-11-11 |  | 3d |
| 53 | 1.5.1 | **Station 3 (PIC18F258)** | 2d | 2014-11-10 | 2014-11-11 |  | 3d |
| 54 |  | Communication série | 1d | 2014-11-10 | 2014-11-10 | 2 | 3d |
| 55 |  | Communication CAN | 1d | 2014-11-10 | 2014-11-10 | 2 | 3d |
| 56 |  | Lecture de la balance | 1d | 2014-11-11 | 2014-11-11 | 54 | 3d |
| 57 |  | Transmission de la trame CAN | 1d | 2014-11-11 | 2014-11-11 | 55 | 3d |
| 58 |  | Temporisation (Horloge SPI) | 1d | 2014-11-10 | 2014-11-10 | 2 | 4d |
| 59 | 1.5.2 | **Ordinateur de backup (SOC8200)** | 2d | 2014-11-10 | 2014-11-11 |  | 3d |
| 60 |  | Communication CAN | 1d | 2014-11-10 | 2014-11-10 | 2 | 4d |
| 61 |  | Communication série | 1d | 2014-11-10 | 2014-11-10 | 2 | 3d |
| 62 |  | Datalog | 1d | 2014-11-11 | 2014-11-11 | 61 | 3d |
| 63 |  | Affichage des données | 1d | 2014-11-10 | 2014-11-10 | 2 | 4d |
| 64 |  | Heartbeats | 1d | 2014-11-11 | 2014-11-11 | 61 | 3d |
| 65 |  | Entrées et sorties (Mode passif) | 1d | 2014-11-10 | 2014-11-10 | 2 | 4d |
| 66 |  | Gestion du système (Mode actif) | 1d | 2014-11-10 | 2014-11-10 | 2 | 4d |
| 67 |  | Rédaction du rapport | 1d | 2014-11-10 | 2014-11-10 | 2 | 4d |
| 68 |  | Présentation du rapport | 1d | 2014-11-10 | 2014-11-10 | 2 | 4d |

## Version 2 (data date 2014-11-10, saved 2014-11-18, file ProjetSess5_LNAH.mpp)

Note of the change: mercredi 10 décembre 2014

Last finish 2014-11-14 → 2014-12-11 (+27d).

Added:

| ID | Task | Duration | Start | Finish | Predecessors | Resources |
| --- | --- | --- | --- | --- | --- | --- |
| 3 | **Semaine 1** | 5d | 2014-11-10 | 2014-11-13 |  |  |
| 12 | Planification | 1d | 2014-11-10 | 2014-11-10 | 2 | Louis-Normand |
| 30 | **Semaine 2** | 5d | 2014-11-13 | 2014-11-19 |  |  |
| 31 | **Véhicule & station 1 (#2)** | 5d | 2014-11-13 | 2014-11-19 |  |  |
| 32 | Intégration I2C | 2d | 2014-11-13 | 2014-11-17 | 17 | Vincent |
| 35 | **Festo (#3)** | 5d | 2014-11-13 | 2014-11-19 |  |  |
| 37 | Programmation de la drive | 1d | 2014-11-17 | 2014-11-18 | 36 | Louis-Normand |
| 40 | **SOC8200 & PIC (#4)** | 5d | 2014-11-13 | 2014-11-19 |  |  |
| 41 | Communication série PIC | 1d | 2014-11-13 | 2014-11-14 | 29 | Gabriel; Hicham |
| 42 | Communication CAN PIC | 1d | 2014-11-14 | 2014-11-17 | 41 | Gabriel; Hicham |
| 44 | Transmission de la trame CAN PIC | 1d | 2014-11-18 | 2014-11-18 | 43 | Gabriel; Hicham |
| 46 | **Semaine 3** | 5d | 2014-11-19 | 2014-11-25 |  |  |
| 47 | **Interface PC (#1)** | 2d | 2014-11-19 | 2014-11-21 |  |  |
| 50 | **Véhicule & station 1 (#2)** | 3d | 2014-11-19 | 2014-11-24 |  |  |
| 54 | **Festo (#3)** | 5d | 2014-11-19 | 2014-11-25 |  |  |
| 59 | **SOC8200 & PIC (#4)** | 5d | 2014-11-19 | 2014-11-25 |  |  |
| 62 | **Semaine 4** | 5d | 2014-12-01 | 2014-12-04 |  |  |
| 63 | **Interface PC (#1)** | 4d | 2014-12-01 | 2014-12-04 |  |  |
| 67 | **Véhicule & station 1 (#2)** | 5d | 2014-12-01 | 2014-12-04 |  |  |
| 72 | **Festo (#3)** | 5d | 2014-12-01 | 2014-12-04 |  |  |
| 75 | **SOC8200 & PIC (#4)** | 5d | 2014-12-01 | 2014-12-04 |  |  |
| 76 | Débogage | 5d | 2014-12-01 | 2014-12-04 | 61 | Vincent |
| 77 | **Semaine 5** | 5d | 2014-12-08 | 2014-12-11 |  |  |
| 78 | **Interface PC (#1)** | 2d | 2014-12-08 | 2014-12-09 |  |  |
| 79 | Débogage | 2d | 2014-12-08 | 2014-12-09 | 66 | Vincent |
| 80 | **Véhicule & station 1 (#2)** | 2d | 2014-12-08 | 2014-12-09 |  |  |
| 81 | Débogage | 2d | 2014-12-08 | 2014-12-09 | 71 | Louis-Normand |
| 82 | **Festo (#3)** | 2d | 2014-12-08 | 2014-12-09 |  |  |
| 83 | Débogage | 2d | 2014-12-08 | 2014-12-09 | 74 | Gabriel |
| 84 | **SOC8200 & PIC (#4)** | 2d | 2014-12-08 | 2014-12-09 |  |  |
| 85 | Débogage | 2d | 2014-12-08 | 2014-12-09 | 76 | Hicham |

Removed: 16 Véhicule (DS89C450); 24 Station 1 (uPSD3254A); 33 Station 2 (Festo-uPSD3254A); 34 Fonctionnement Festo; 38 Conception de la carte I2C; 41 Montage; 42 Drive Moteur; 53 Station 3 (PIC18F258); 57 Transmission de la trame CAN; 59 Ordinateur de backup (SOC8200); 60 Communication CAN; 61 Communication série

Changed:

| ID | Task | Start | Finish | Duration | Total float | Predecessors | Other |
| --- | --- | --- | --- | --- | --- | --- | --- |
| 1 | **Projet de la 5e session** |  | 2014-11-14 → 2014-12-11 (+27d) | 5d → 30.71d |  |  |  |
| 2 | Début du projet |  |  |  | 0d → 15.71d |  | constraint none → start no earlier than 2014-11-10 |
| 4 | **Interface PC (#1)** |  | 2014-11-12 → 2014-11-13 (+1d) | 3d → 5d | 2d → 25.71d |  |  |
| 5 | Communication CAN |  |  |  | 3d → 25.71d |  | resources none → Vincent |
| 6 | Communication série |  | 2014-11-10 → 2014-11-11 (+1d) |  | 2d → 25.71d | 2 → 5 | resources none → Vincent |
| 7 | Heartbeats |  | 2014-11-11 → 2014-11-12 (+1d) |  | 3d → 25.71d |  | resources none → Vincent |
| 8 | Historique |  | 2014-11-12 → 2014-11-13 (+1d) |  | 2d → 25.71d | 10 → 7 | resources none → Vincent |
| 9 | Interface usager | 2014-11-10 → 2014-11-13 (+3d) | 2014-11-10 → 2014-11-13 (+3d) | 1d → 0.5d | 4d → 25.71d | 2 → 8 | resources none → Vincent |
| 10 | Date & heure | 2014-11-11 → 2014-11-13 (+2d) | 2014-11-11 → 2014-11-13 (+2d) | 1d → 0.5d | 2d → 25.71d | 6 → 9 | resources none → Vincent |
| 11 | **Véhicule & station 1 (#2)** |  |  | 4d → 5d | 1d → 6.29d |  |  |
| 13 | Montage |  | 2014-11-10 → 2014-11-11 (+1d) |  | 1d → 17.71d | 2 → 12 | resources none → Louis-Normand |
| 14 | Vérification du matériel |  |  | 1d → 0.2d | 1d → 17.71d |  | resources none → Louis-Normand |
| 15 | Arrêt | 2014-11-13 → 2014-11-12 (-1d) |  | 1d → 0.8d | 1d → 17.71d |  | resources none → Louis-Normand |
| 16 | Suivie de la ligne | 2014-11-12 → 2014-11-11 (-1d) |  |  | 1d → 17.71d |  | resources none → Louis-Normand |
| 17 | Transposition des fonctions | 2014-11-10 → 2014-11-13 (+3d) | 2014-11-10 → 2014-11-13 (+3d) |  | 4d → 17.71d | 2 → 15 | resources none → Louis-Normand |
| 18 | **Festo (#3)** |  | 2014-11-14 → 2014-11-13 (-1d) |  | 0d → 4.29d |  |  |
| 19 | Montage |  |  |  | 1d → 15.71d |  | resources none → Gabriel |
| 20 | Test des I/O de la table | 2014-11-12 → 2014-11-10 (-2d) | 2014-11-12 → 2014-11-11 (-1d) |  | 1d → 15.71d | 21 → 19 | resources none → Gabriel |
| 21 | Circuit prototype |  | 2014-11-11 → 2014-11-12 (+1d) |  | 1d → 15.71d | 19 → 20 | resources none → Gabriel |
| 22 | Schématisation | 2014-11-10 → 2014-11-12 (+2d) | 2014-11-10 → 2014-11-13 (+3d) |  | 0d → 15.71d | 2 → 21 | resources none → Gabriel |
| 23 | Contrôle des I/O du moteur | 2014-11-12 → 2014-11-13 (+1d) | 2014-11-12 → 2014-11-13 (+1d) |  | 2d → 15.71d | 39 → 22 | resources none → Gabriel |
| 24 | **SOC8200 (#4)** |  | 2014-11-11 → 2014-11-13 (+2d) | 2d → 5d | 3d → 4.29d |  |  |
| 25 | Communication CAN |  |  |  | 3d → 15.71d |  | resources none → Hicham |
| 26 | Communication série |  | 2014-11-10 → 2014-11-11 (+1d) |  | 3d → 15.71d | 2 → 25 | resources none → Hicham |
| 27 | Heartbeats |  | 2014-11-11 → 2014-11-12 (+1d) |  | 3d → 15.71d | Communication série → 26 | resources none → Hicham |
| 28 | Datalog | 2014-11-11 → 2014-11-12 (+1d) | 2014-11-11 → 2014-11-13 (+2d) |  | 3d → 15.71d | Communication série → 27 | resources none → Hicham |
| 29 | Affichage des données | 2014-11-10 → 2014-11-13 (+3d) | 2014-11-10 → 2014-11-13 (+3d) |  | 4d → 15.71d | 2 → 28 | resources none → Hicham |
| 33 | Communication | 2014-11-12 → 2014-11-17 (+5d) | 2014-11-12 → 2014-11-18 (+6d) | 1d → 2d | 2d → 6.29d | 14 → 32 | resources none → Vincent |
| 34 | Sens de rotation | 2014-11-13 → 2014-11-19 (+6d) | 2014-11-13 → 2014-11-19 (+6d) |  | 1d → 6.29d | 16 → 33 | resources none → Vincent |
| 36 | PCB | 2014-11-11 → 2014-11-13 (+2d) | 2014-11-11 → 2014-11-17 (+6d) | 1d → 2d | 0d → 15.71d | 22 → 23 | resources none → Louis-Normand |
| 38 | Montage de la carte multi-I/O | 2014-11-10 → 2014-11-18 (+8d) | 2014-11-10 → 2014-11-18 (+8d) |  | 2d → 15.71d | 2 → 37 | resources none → Louis-Normand |
| 39 | Interfaçage de la carte multi-I/O | 2014-11-11 → 2014-11-19 (+8d) | 2014-11-11 → 2014-11-19 (+8d) |  | 2d → 4.29d |  | resources none → Louis-Normand |
| 43 | Lecture de la balance | 2014-11-11 → 2014-11-17 (+6d) | 2014-11-11 → 2014-11-18 (+7d) |  | 3d → 15.71d | 26 → 42 | resources none → Gabriel; Hicham |
| 45 | Temporisation (Horloge SPI) | 2014-11-10 → 2014-11-19 (+9d) | 2014-11-10 → 2014-11-19 (+9d) |  | 4d → 15.71d | 2 → 44 | resources none → Gabriel; Hicham |
| 48 | Gestion des blocs | 2014-11-11 → 2014-11-19 (+8d) | 2014-11-11 → 2014-11-20 (+9d) |  | 3d → 18.71d | 6 → 39 | resources none → Gabriel |
| 49 | Gestion des exceptions | 2014-11-11 → 2014-11-20 (+9d) | 2014-11-11 → 2014-11-21 (+10d) |  | 3d → 18.71d | 5, 6 → 48 | resources none → Gabriel |
| 51 | Communication sans-fil | 2014-11-10 → 2014-11-19 (+9d) | 2014-11-10 → 2014-11-20 (+10d) |  | 3d → 17.71d | 2 → 34 | resources none → Hicham |
| 52 | Communication CAN | 2014-11-10 → 2014-11-20 (+10d) | 2014-11-10 → 2014-11-21 (+11d) |  | 3d → 17.71d | 2 → 51 | resources none → Hicham |
| 53 | Gestion des données | 2014-11-11 → 2014-11-21 (+10d) | 2014-11-11 → 2014-11-24 (+13d) |  | 3d → 17.71d | 51, 25 → 52 | resources none → Hicham |
| 55 | Communication Xbee | 2014-11-10 → 2014-11-19 (+9d) | 2014-11-10 → 2014-11-20 (+10d) |  | 3d → 15.71d | 2 → 39 | resources none → Vincent |
| 56 | Commandes PC | 2014-11-11 → 2014-11-20 (+9d) | 2014-11-11 → 2014-11-21 (+10d) |  | 3d → 15.71d |  | resources none → Vincent |
| 57 | Identification de la cargaison | 2014-11-13 → 2014-11-21 (+8d) | 2014-11-13 → 2014-11-24 (+11d) |  | 0d → 15.71d | Conception de la carte I2C → 56 | resources none → Vincent |
| 58 | Traitement et transfert des cargaisons | 2014-11-14 → 2014-11-24 (+10d) | 2014-11-14 → 2014-11-25 (+11d) | 1d → 2d | 0d → 15.71d |  | resources none → Vincent |
| 60 | Entrées et sorties (Mode passif) | 2014-11-10 → 2014-11-19 (+9d) | 2014-11-10 → 2014-11-21 (+11d) | 1d → 2d | 4d → 15.71d | 2 → 45 | resources none → Louis-Normand |
| 61 | Gestion du système (Mode actif) | 2014-11-10 → 2014-11-21 (+11d) | 2014-11-10 → 2014-11-25 (+15d) | 1d → 3d | 4d → 15.71d | 2 → 60 | resources none → Louis-Normand |
| 64 | Réception données véhicule | 2014-11-11 → 2014-12-01 (+20d) | 2014-11-11 → 2014-12-01 (+20d) |  | 3d → 1d | 6 → 51 | resources none → Louis-Normand |
| 65 | Contrôle du véhicule | 2014-11-11 → 2014-12-01 (+20d) | 2014-11-11 → 2014-12-03 (+22d) | 1d → 2d | 3d → 1d | 6 → 64 | resources none → Louis-Normand |
| 66 | Image graphique de la piste | 2014-11-11 → 2014-12-03 (+22d) | 2014-11-11 → 2014-12-04 (+23d) |  | 3d → 1d | 6 → 65 | resources none → Louis-Normand |
| 68 | No du véhicule | 2014-11-11 → 2014-12-01 (+20d) | 2014-11-11 → 2014-12-01 (+20d) |  | 3d → 0d | 51 → 53 | resources none → Gabriel |
| 69 | Gestion de l'heure | 2014-11-11 → 2014-12-01 (+20d) | 2014-11-11 → 2014-12-02 (+21d) |  | 3d → 0d | 51 → 68 | resources none → Gabriel |
| 70 | Sens d'arrivée | 2014-11-11 → 2014-12-02 (+21d) | 2014-11-11 → 2014-12-04 (+23d) | 1d → 2d | 3d → 0d | 51 → 69 | resources none → Gabriel |
| 71 | Gestion des feux de circulation | 2014-11-11 → 2014-12-04 (+23d) | 2014-11-11 → 2014-12-04 (+23d) |  | 3d → 0d | 25 → 70 | resources none → Gabriel |
| 73 | Interface triac | 2014-11-13 → 2014-12-01 (+18d) | 2014-11-13 → 2014-12-02 (+19d) | 1d → 2d | 1d → 0d | 20 → 58 | resources none → Hicham |
| 74 | Chute des blocs | 2014-11-13 → 2014-12-02 (+19d) | 2014-11-13 → 2014-12-04 (+21d) | 1d → 3d | 1d → 0d | 20 → 73 | resources none → Hicham |
| 86 | Rédaction du rapport | 2014-11-10 → 2014-12-10 (+30d) | 2014-11-10 → 2014-12-10 (+30d) |  | 4d → 0.43d |  | constraint none → start no earlier than 2014-12-10; resources none → Louis-Normand; Gabriel; Hicham; Vincent |
| 87 | Présentation du rapport | 2014-11-10 → 2014-12-10 (+30d) | 2014-11-10 → 2014-12-11 (+31d) |  | 4d → 0.43d | 2 → 86 | constraint none → finish no earlier than 2014-12-08; resources none → Louis-Normand; Gabriel; Hicham; Vincent |

## Version 3 (data date 2014-11-14, saved 2014-11-28, file ProjetSess5_LNAH - SuiviS1.mpp)

Note of the change: mercredi 10 décembre 2014

Last finish stays 2014-12-11. Complete tasks 0 → 22.

Changed:

| ID | Task | Start | Finish | Complete | Total float |
| --- | --- | --- | --- | --- | --- |
| 1 | **Projet de la 5e session** | 2014-11-10 A |  | 0% → 25% |  |
| 3 | **Semaine 1** | 2014-11-10 A | 2014-11-13 A | 0% → 100% | 4.29d → none |
| 4 | **Interface PC (#1)** | 2014-11-10 A | 2014-11-13 A | 0% → 100% | 25.71d → none |
| 5 | Communication CAN | 2014-11-10 A | 2014-11-10 A | 0% → 100% | 25.71d → none |
| 6 | Communication série | 2014-11-10 A | 2014-11-11 A | 0% → 100% | 25.71d → none |
| 7 | Heartbeats | 2014-11-11 A | 2014-11-12 A | 0% → 100% | 25.71d → none |
| 8 | Historique | 2014-11-12 A | 2014-11-13 A | 0% → 100% | 25.71d → none |
| 9 | Interface usager | 2014-11-13 A | 2014-11-13 A | 0% → 100% | 25.71d → none |
| 10 | Date & heure | 2014-11-13 A | 2014-11-13 A | 0% → 100% | 25.71d → none |
| 11 | **Véhicule & station 1 (#2)** | 2014-11-10 A | 2014-11-13 A | 0% → 100% | 6.29d → none |
| 12 | Planification | 2014-11-10 A | 2014-11-10 A | 0% → 100% | 17.71d → none |
| 13 | Montage | 2014-11-10 A | 2014-11-11 A | 0% → 100% | 17.71d → none |
| 14 | Vérification du matériel | 2014-11-11 A | 2014-11-11 A | 0% → 100% | 17.71d → none |
| 15 | Arrêt | 2014-11-12 A | 2014-11-13 A | 0% → 100% | 17.71d → none |
| 16 | Suivie de la ligne | 2014-11-11 A | 2014-11-12 A | 0% → 100% | 17.71d → none |
| 17 | Transposition des fonctions | 2014-11-13 A | 2014-11-13 A | 0% → 100% | 17.71d → none |
| 18 | **Festo (#3)** | 2014-11-10 A | 2014-11-13 A | 0% → 100% | 4.29d → none |
| 19 | Montage | 2014-11-10 A | 2014-11-10 A | 0% → 100% | 15.71d → none |
| 20 | Test des I/O de la table | 2014-11-10 A | 2014-11-11 A | 0% → 100% | 15.71d → none |
| 21 | Circuit prototype | 2014-11-11 A | 2014-11-12 A | 0% → 100% | 15.71d → none |
| 22 | Schématisation | 2014-11-12 A | 2014-11-13 A | 0% → 100% | 15.71d → none |
| 23 | Contrôle des I/O du moteur | 2014-11-13 A | 2014-11-13 A | 0% → 100% | 15.71d → none |
| 24 | **SOC8200 (#4)** | 2014-11-10 A | 2014-11-13 A | 0% → 100% | 4.29d → none |
| 25 | Communication CAN | 2014-11-10 A | 2014-11-10 A | 0% → 100% | 15.71d → none |
| 26 | Communication série | 2014-11-10 A | 2014-11-11 A | 0% → 100% | 15.71d → none |
| 27 | Heartbeats | 2014-11-11 A | 2014-11-12 A | 0% → 100% | 15.71d → none |
| 28 | Datalog | 2014-11-12 A | 2014-11-13 A | 0% → 100% | 15.71d → none |
| 29 | Affichage des données | 2014-11-13 A | 2014-11-13 A | 0% → 100% | 15.71d → none |
| 30 | **Semaine 2** | 2014-11-13 → 2014-11-17 (+4d) | 2014-11-19 → 2014-11-20 (+1d) |  | 4.29d → none |
| 31 | **Véhicule & station 1 (#2)** | 2014-11-13 → 2014-11-17 (+4d) | 2014-11-19 → 2014-11-20 (+1d) |  | 6.29d → 0d |
| 32 | Intégration I2C | 2014-11-13 → 2014-11-17 (+4d) | 2014-11-17 → 2014-11-18 (+1d) |  | 17.71d → 0d |
| 33 | Communication | 2014-11-17 → 2014-11-18 (+1d) | 2014-11-18 → 2014-11-20 (+2d) |  | 6.29d → 0d |
| 34 | Sens de rotation | 2014-11-19 → 2014-11-20 (+1d) | 2014-11-19 → 2014-11-20 (+1d) |  | 6.29d → 0d |
| 35 | **Festo (#3)** | 2014-11-13 → 2014-11-17 (+4d) | 2014-11-19 → 2014-11-20 (+1d) |  | 4.29d → 0d |
| 36 | PCB | 2014-11-13 → 2014-11-17 (+4d) | 2014-11-17 → 2014-11-18 (+1d) |  | 15.71d → 0d |
| 37 | Programmation de la drive | 2014-11-17 → 2014-11-18 (+1d) | 2014-11-18 → 2014-11-19 (+1d) |  | 4.29d → 0d |
| 38 | Montage de la carte multi-I/O | 2014-11-18 → 2014-11-19 (+1d) | 2014-11-18 → 2014-11-20 (+2d) |  | 15.71d → 0d |
| 39 | Interfaçage de la carte multi-I/O | 2014-11-19 → 2014-11-20 (+1d) | 2014-11-19 → 2014-11-20 (+1d) |  | 4.29d → 0d |
| 40 | **SOC8200 & PIC (#4)** | 2014-11-13 → 2014-11-17 (+4d) | 2014-11-19 → 2014-11-20 (+1d) |  | 4.29d → 0d |
| 41 | Communication série PIC | 2014-11-13 → 2014-11-17 (+4d) | 2014-11-14 → 2014-11-17 (+3d) |  | 15.71d → 0d |
| 42 | Communication CAN PIC | 2014-11-14 → 2014-11-17 (+3d) | 2014-11-17 → 2014-11-18 (+1d) |  | 15.71d → 0d |
| 43 | Lecture de la balance | 2014-11-17 → 2014-11-18 (+1d) | 2014-11-18 → 2014-11-19 (+1d) |  | 15.71d → 0d |
| 44 | Transmission de la trame CAN PIC | 2014-11-18 → 2014-11-19 (+1d) | 2014-11-18 → 2014-11-20 (+2d) |  | 15.71d → 0d |
| 45 | Temporisation (Horloge SPI) | 2014-11-19 → 2014-11-20 (+1d) | 2014-11-19 → 2014-11-20 (+1d) |  | 15.71d → 0d |
| 46 | **Semaine 3** | 2014-11-19 → 2014-11-24 (+5d) | 2014-11-25 → 2014-11-27 (+2d) |  | 4.29d → none |
| 47 | **Interface PC (#1)** | 2014-11-19 → 2014-11-24 (+5d) | 2014-11-21 → 2014-11-25 (+4d) |  | 18.71d → 3d |
| 48 | Gestion des blocs | 2014-11-19 → 2014-11-24 (+5d) | 2014-11-20 → 2014-11-24 (+4d) |  | 18.71d → 3d |
| 49 | Gestion des exceptions | 2014-11-20 → 2014-11-24 (+4d) | 2014-11-21 → 2014-11-25 (+4d) |  | 18.71d → 3d |
| 50 | **Véhicule & station 1 (#2)** | 2014-11-19 → 2014-11-24 (+5d) | 2014-11-24 → 2014-11-26 (+2d) |  | 6.29d → 2d |
| 51 | Communication sans-fil | 2014-11-19 → 2014-11-24 (+5d) | 2014-11-20 → 2014-11-24 (+4d) |  | 17.71d → 2d |
| 52 | Communication CAN | 2014-11-20 → 2014-11-24 (+4d) | 2014-11-21 → 2014-11-25 (+4d) |  | 17.71d → 2d |
| 53 | Gestion des données | 2014-11-21 → 2014-11-25 (+4d) | 2014-11-24 → 2014-11-26 (+2d) |  | 17.71d → 2d |
| 54 | **Festo (#3)** | 2014-11-19 → 2014-11-24 (+5d) | 2014-11-25 → 2014-11-27 (+2d) |  | 4.29d → 0d |
| 55 | Communication Xbee | 2014-11-19 → 2014-11-24 (+5d) | 2014-11-20 → 2014-11-24 (+4d) |  | 15.71d → 0d |
| 56 | Commandes PC | 2014-11-20 → 2014-11-24 (+4d) | 2014-11-21 → 2014-11-25 (+4d) |  | 15.71d → 0d |
| 57 | Identification de la cargaison | 2014-11-21 → 2014-11-25 (+4d) | 2014-11-24 → 2014-11-26 (+2d) |  | 15.71d → 0d |
| 58 | Traitement et transfert des cargaisons | 2014-11-24 → 2014-11-26 (+2d) | 2014-11-25 → 2014-11-27 (+2d) |  | 15.71d → 0d |
| 59 | **SOC8200 & PIC (#4)** | 2014-11-19 → 2014-11-24 (+5d) | 2014-11-25 → 2014-11-27 (+2d) |  | 4.29d → 0d |
| 60 | Entrées et sorties (Mode passif) | 2014-11-19 → 2014-11-24 (+5d) | 2014-11-21 → 2014-11-25 (+4d) |  | 15.71d → 0d |
| 61 | Gestion du système (Mode actif) | 2014-11-21 → 2014-11-25 (+4d) | 2014-11-25 → 2014-11-27 (+2d) |  | 15.71d → 0d |

## Version 4 (data date 2014-11-21, saved 2014-11-28, file ProjetSess5_LNAH - SuiviS2.mpp)

Note of the change: mercredi 10 décembre 2014

Last finish stays 2014-12-11. Complete tasks 22 → 26.

Changed:

| ID | Task | Start | Finish | Complete | Total float |
| --- | --- | --- | --- | --- | --- |
| 1 | **Projet de la 5e session** |  |  | 25% → 36% |  |
| 30 | **Semaine 2** | 2014-11-17 A |  | 0% → 55% |  |
| 31 | **Véhicule & station 1 (#2)** | 2014-11-17 A |  | 0% → 50% |  |
| 32 | Intégration I2C | 2014-11-17 A |  | 0% → 75% | 0d → 1d |
| 33 | Communication | 2014-11-18 A |  | 0% → 50% |  |
| 35 | **Festo (#3)** | 2014-11-17 A |  | 0% → 65% |  |
| 36 | PCB | 2014-11-17 A | 2014-11-18 A | 0% → 100% | 0d → none |
| 37 | Programmation de la drive | 2014-11-18 A | 2014-11-19 A | 0% → 100% | 0d → none |
| 38 | Montage de la carte multi-I/O | 2014-11-19 A |  | 0% → 25% |  |
| 40 | **SOC8200 & PIC (#4)** | 2014-11-17 A |  | 0% → 50% |  |
| 41 | Communication série PIC | 2014-11-17 A | 2014-11-17 A | 0% → 100% | 0d → none |
| 42 | Communication CAN PIC | 2014-11-17 A | 2014-11-18 A | 0% → 100% | 0d → none |
| 43 | Lecture de la balance | 2014-11-18 A |  | 0% → 25% | 0d → 0.25d |
| 44 | Transmission de la trame CAN PIC | 2014-11-19 A |  | 0% → 25% |  |

## Version 5 (data date 2014-11-28, saved 2014-11-28, file ProjetSess5_LNAH - SuiviS3.mpp)

Note of the change: mercredi 10 décembre 2014

Last finish stays 2014-12-11. Complete tasks 26 → 35.

Changed:

| ID | Task | Start | Finish | Complete | Total float |
| --- | --- | --- | --- | --- | --- |
| 1 | **Projet de la 5e session** |  |  | 36% → 46% |  |
| 30 | **Semaine 2** |  |  | 55% → 93% |  |
| 31 | **Véhicule & station 1 (#2)** |  |  | 50% → 80% |  |
| 32 | Intégration I2C |  | 2014-11-18 A | 75% → 100% | 1d → none |
| 33 | Communication |  | 2014-11-20 A | 50% → 100% | 0d → none |
| 35 | **Festo (#3)** |  | 2014-11-20 A | 65% → 100% | 0d → none |
| 38 | Montage de la carte multi-I/O |  | 2014-11-20 A | 25% → 100% | 0d → none |
| 39 | Interfaçage de la carte multi-I/O | 2014-11-20 A | 2014-11-20 A | 0% → 100% | 0d → none |
| 40 | **SOC8200 & PIC (#4)** |  | 2014-11-20 A | 50% → 100% | 0d → none |
| 43 | Lecture de la balance |  | 2014-11-19 A | 25% → 100% | 0.25d → none |
| 44 | Transmission de la trame CAN PIC |  | 2014-11-20 A | 25% → 100% | 0d → none |
| 45 | Temporisation (Horloge SPI) | 2014-11-20 A | 2014-11-20 A | 0% → 100% | 0d → none |
| 46 | **Semaine 3** | 2014-11-24 A |  | 0% → 13% |  |
| 50 | **Véhicule & station 1 (#2)** | 2014-11-24 A |  | 0% → 67% |  |
| 51 | Communication sans-fil | 2014-11-24 A | 2014-11-24 A | 0% → 100% | 2d → none |
| 52 | Communication CAN | 2014-11-24 A | 2014-11-25 A | 0% → 100% | 2d → none |
